# 프로젝트 일정 관리 v1.7 20150806

How a schedule from MS Project changed from version to version. A marks actual dates.

## Version 1 (saved 2015-08-06, file 프로젝트 일정 관리 v1.7 20150806.mpp)

Note of the change: Merge branch 'master' of http://61.97.131.25:8085/root/zeniware

| ID | WBS | Task | Duration | Start | Finish | Predecessors | Complete |
| --- | --- | --- | --- | --- | --- | --- | --- |
| 1 | 1 | **임대형 그룹웨어 구축 프로젝트** | 221d | 2015-03-23 A | 2016-01-29 |  | 41% |
| 2 | 1.1 | **착수** | 31d | 2015-03-23 A | 2015-05-03 A |  | 100% |
| 3 | 1.1.1 | **준비 및 계획** | 31d | 2015-03-23 A | 2015-05-03 A |  | 100% |
| 4 |  | 개발환경 설정 | 16d | 2015-03-23 A | 2015-04-12 A |  | 100% |
| 5 |  | Framework 선정 | 11d | 2015-03-23 A | 2015-04-05 A |  | 100% |
| 6 |  | UI Component 선정 | 11d | 2015-03-30 A | 2015-04-12 A |  | 100% |
| 7 |  | 웹메일 솔루션 검토 | 11d | 2015-03-30 A | 2015-04-12 A |  | 100% |
| 8 |  | 그룹웨어 솔루션 벤치마킹 | 16d | 2015-04-13 A | 2015-05-03 A |  | 100% |
| 9 |  | 웹메일 솔루션 BMT | 11d | 2015-04-20 A | 2015-05-03 A |  | 100% |
| 10 | 1.2 | **분석** | 21d | 2015-03-30 A | 2015-04-26 A |  | 100% |
| 11 | 1.2.1 | **구현 범위 산정** | 21d | 2015-03-30 A | 2015-04-26 A |  | 100% |
| 12 |  | 대표 기능 선정 | 11d | 2015-03-30 A | 2015-04-12 A |  | 100% |
| 13 |  | 세부 기능 선정 | 21d | 2015-03-30 A | 2015-04-26 A |  | 100% |
| 14 | 1.3 | **설계** | 51d | 2015-04-13 A | 2015-06-21 A |  | 100% |
| 15 |  | 프로세스 설계 | 11d | 2015-04-13 A | 2015-04-26 A |  | 100% |
| 16 | 1.3.2 | **상세설계** | 46d | 2015-04-20 A | 2015-06-21 A |  | 100% |
| 17 |  | 메뉴구성 설계 | 6d | 2015-04-20 A | 2015-04-26 A |  | 100% |
| 18 |  | 화면 구성 설계 | 11d | 2015-04-27 A | 2015-05-10 A |  | 100% |
| 19 |  | 코드 쳬계 확립 | 11d | 2015-04-27 A | 2015-05-10 A |  | 100% |
| 20 |  | 공통 모듈 설계 | 11d | 2015-05-04 A | 2015-05-17 A |  | 100% |
| 21 |  | 데이터베이스 설계 | 16d | 2015-05-04 A | 2015-05-24 A |  | 100% |
| 22 |  | 세부 데이터베이스 설셰 | 11d | 2015-05-25 A | 2015-06-07 A |  | 100% |
| 23 |  | 사용자 권한 설계 | 11d | 2015-06-08 A | 2015-06-21 A |  | 100% |
| 24 | 1.4 | **구현** | 167d | 2015-05-04 | 2015-12-24 |  | 24% |
| 25 |  | 개발 구현 | 152d | 2015-05-25 A | 2015-12-24 |  | 13% |
| 26 |  | 공통 모듈 구현 | 25d | 2015-05-25 A | 2015-06-26 A |  | 100% |
| 27 | 1.4.3 | **단위 업무 구현** | 127d | 2015-06-29 A | 2015-12-24 |  | 24% |
| 28 | 1.4.3.1 | **일정관리** | 28d | 2015-06-29 A | 2015-08-05 |  | 87% |
| 29 |  | 일정관리 기본 레이아웃 | 28d | 2015-06-29 A | 2015-08-05 |  | 95% |
| 30 |  | 캘린더 기본 | 25d | 2015-06-29 A | 2015-07-31 A |  | 100% |
| 31 |  | 공유캘린더 | 3d | 2015-08-03 A | 2015-08-05 |  |  |
| 32 |  | 반복일정 | 2d | 2015-08-04 A | 2015-08-05 |  | 30% |
| 33 |  | 할일 | 2d | 2015-08-04 | 2015-08-05 |  |  |
| 34 | 1.4.3.2 | **관리자** | 127d | 2015-06-29 A | 2015-12-24 |  | 31% |
| 35 | 1.4.3.2.1 | **환경설정** | 43d | 2015-06-29 A | 2015-08-26 |  | 63% |
| 36 |  | 공통코드 관리 | 10d | 2015-06-29 A | 2015-07-10 A |  | 100% |
| 37 |  | 조직 관리 | 16d | 2015-07-13 A | 2015-08-03 |  | 80% |
| 38 |  | 메뉴 관리 및 권한 | 10d | 2015-08-13 | 2015-08-26 |  |  |
| 39 | 1.4.3.2.2 | **커뮤니티** | 35d | 2015-06-29 A | 2015-08-14 |  | 75% |
| 40 |  | 기본 설정 | 10d | 2015-06-29 A | 2015-07-10 A | 26 | 100% |
| 41 |  | 커뮤니티 개설/폐쇄 관리 | 5d | 2015-07-13 A | 2015-07-17 A |  | 100% |
| 42 |  | 설문 관리 | 5d | 2015-08-10 | 2015-08-14 |  |  |
| 43 | 1.4.3.2.3 | **일정관리** | 13d | 2015-07-27 | 2015-08-12 |  |  |
| 44 |  | 캘린더 관리 | 2d | 2015-08-06 | 2015-08-07 |  |  |
| 45 |  | 공휴일 관리 | 3d | 2015-08-10 | 2015-08-12 |  |  |
| 46 | 1.4.3.2.4 | **전자결재** | 97d | 2015-08-10 | 2015-12-24 |  |  |
| 47 |  | 기본 설정 | 5d | 2015-08-10 | 2015-08-14 |  |  |
| 48 |  | 결재 양식 관리 | 10d | 2015-08-17 | 2015-08-28 |  |  |
| 49 |  | 문서번호 채번 규칙 설정 | 3d | 2015-08-31 | 2015-09-02 |  |  |
| 50 |  | 보안등급 관리 | 1d | 2015-09-03 | 2015-09-03 |  |  |
| 51 |  | 보존연한 관리 | 1d | 2015-09-04 | 2015-09-04 |  |  |
| 52 |  | 부서 문서함 관리 | 5d | 2015-12-14 | 2015-12-18 |  |  |
| 53 |  | 문서함 이동 / 문서 이동 | 4d | 2015-12-21 | 2015-12-24 |  |  |
| 54 |  | 자원예약 관리 | 4d | 2015-10-08 | 2015-10-14 |  |  |
| 55 | 1.4.3.2.6 | **게시판** | 58d | 2015-08-31 | 2015-11-20 |  |  |
| 56 |  | 기본 설정 | 5d | 2015-09-07 | 2015-09-11 |  |  |
| 57 |  | 전사 게시판 관리 | 10d | 2015-09-14 | 2015-09-25 |  |  |
| 58 |  | 팝업 공지 관리 | 5d | 2015-09-28 | 2015-10-02 |  |  |
| 59 |  | 업무일지 대상자 관리 | 2d | 2015-10-22 | 2015-10-23 |  |  |
| 60 |  | 문서관리 권한 설정 | 5d | 2015-10-26 | 2015-10-30 |  |  |
| 61 | 1.4.3.3 | **커뮤니티** | 35d | 2015-07-20 A | 2015-09-04 |  | 36% |
| 62 |  | 커뮤니티 메인 | 11d | 2015-07-20 A | 2015-08-03 |  | 95% |
| 63 |  | 커뮤니티 기본 게시판 | 4d | 2015-08-04 A | 2015-08-07 |  | 10% |
| 64 |  | 전자설문 | 15d | 2015-08-17 | 2015-09-04 |  |  |
| 65 |  | 임직원조회 | 4d | 2015-08-04 | 2015-08-07 |  |  |
| 66 |  | 자원예약 | 24d | 2015-09-03 | 2015-10-07 |  |  |
| 67 | 1.4.3.6 | **전자결재** | 73d | 2015-09-07 | 2015-12-18 |  |  |
| 68 |  | 양식 선택 | 5d | 2015-09-07 | 2015-09-11 |  |  |
| 69 |  | 문서 상신 - 기본 설정 | 5d | 2015-09-14 | 2015-09-18 |  |  |
| 70 |  | 문서 상신 - 결재선 지정 | 5d | 2015-09-21 | 2015-09-25 |  |  |

| ID | WBS | Task | Duration | Start | Finish |
| --- | --- | --- | --- | --- | --- |
| 71 |  | 문서 상신 - 수신처 지정 | 3d | 2015-09-30 | 2015-10-02 |
| 72 |  | 문서 상신 - 문서 정보 | 5d | 2015-10-12 | 2015-10-16 |
| 73 |  | 문서 상신 처리 | 5d | 2015-10-19 | 2015-10-23 |
| 74 |  | 문서 결재 처리 | 5d | 2015-10-26 | 2015-10-30 |
| 75 |  | 문서 접수 처리 | 5d | 2015-11-02 | 2015-11-06 |
| 76 |  | 개인결재 목록 | 10d | 2015-11-09 | 2015-11-20 |
| 77 |  | 부서결재 목록 | 10d | 2015-11-23 | 2015-12-04 |
| 78 |  | 개인문서함 목록 | 10d | 2015-12-07 | 2015-12-18 |
| 79 | 1.4.3.7 | **게시판** | 29d | 2015-10-05 | 2015-11-13 |
| 80 |  | 업무관리 | 19d | 2015-10-05 | 2015-10-30 |
| 81 |  | 제안제도 | 5d | 2015-10-26 | 2015-10-30 |
| 82 |  | 사내도서관 | 5d | 2015-11-02 | 2015-11-06 |
| 83 |  | 문서관리 | 10d | 2015-11-02 | 2015-11-13 |
| 84 |  | 업무일지 | 7d | 2015-10-15 | 2015-10-23 |
| 85 |  | 고객사관리 | 5d | 2015-08-27 | 2015-09-02 |
| 86 |  | 전자우편 | 30d | 2015-10-05 | 2015-11-16 |
| 87 | 1.4.3.9 | **통계** | 10d | 2015-11-16 | 2015-11-27 |
| 88 |  | 근태 | 5d | 2015-11-16 | 2015-11-20 |
| 89 |  | 업무일지 | 5d | 2015-11-23 | 2015-11-27 |
| 90 |  | 환경설정 | 5d | 2015-11-09 | 2015-11-13 |
| 91 |  | 마이페이지 | 5d | 2015-11-16 | 2015-11-20 |
| 92 |  | 메인페이지 | 10d | 2015-11-23 | 2015-12-04 |
| 93 |  | 다국어 처리 | 4d | 2015-12-21 | 2015-12-24 |
| 94 | 1.5 | **시험** | 19d | 2015-12-28 | 2016-01-22 |
| 95 | 1.5.1 | **단위 테스트** | 9d | 2015-12-28 | 2016-01-08 |
| 96 |  | 단위 테스트 계획 수립 | 5d | 2015-11-30 | 2015-12-04 |
| 97 |  | 단위 테스트 | 5d | 2015-12-07 | 2015-12-11 |
| 98 | 1.5.1.3 | **통합 테스트** | 10d | 2015-12-14 | 2015-12-28 |
| 99 |  | 통합 테스트 계획 수립 | 5d | 2015-12-14 | 2015-12-18 |
| 100 |  | 통합 테스트 | 4d | 2015-12-21 | 2015-12-24 |
| 101 | 1.6 | **전개** | 24d | 2015-12-28 | 2016-01-29 |
| 102 | 1.6.1 | **운영 환경 구축** | 24d | 2015-12-28 | 2016-01-29 |
| 103 |  | 시범운영 | 5d | 2016-01-04 | 2016-01-08 |
| 104 |  | 안정화 | 15d | 2016-01-11 | 2016-01-29 |
| 105 |  | 운영 서버 설정 | 5d | 2015-12-28 | 2016-01-04 |
| 106 |  | 신규 서비스 오픈 | 1d | 2016-01-04 | 2016-01-04 |

## Version 2 (saved 2015-08-13, file 프로젝트 일정 관리 v1.7 20150813.mpp)

Note of the change: Merge branch 'master' of http://61.97.131.25:8085/root/zeniware

Last finish stays 2016-01-29. Complete tasks 21 → 22.

Changed:

| ID | Task | Start | Finish | Complete | Other |
| --- | --- | --- | --- | --- | --- |
| 24 | **구현** |  |  | 24% → 25% |  |
| 27 | **단위 업무 구현** |  |  | 24% → 25% |  |
| 28 | **일정관리** |  |  | 87% → 89% | resources 정종석 → none |
| 29 | 일정관리 기본 레이아웃 |  |  | 95% → 96% | resources none → 정종석 |
| 30 | 캘린더 기본 |  |  |  | resources none → 정종석 |
| 31 | 공유캘린더 |  |  |  | resources none → 정종석 |
| 32 | 반복일정 |  |  | 30% → 80% | resources none → 정종석 |
| 33 | 할일 |  |  |  | resources none → 정종석 |
| 34 | **관리자** |  |  | 31% → 32% |  |
| 35 | **환경설정** |  |  | 63% → 66% |  |
| 37 | 조직 관리 |  |  | 80% → 85% |  |
| 46 | **전자결재** | 2015-08-10 A |  | 0% → 1% |  |
| 47 | 기본 설정 | 2015-08-10 A |  | 0% → 5% |  |
| 61 | **커뮤니티** |  |  | 36% → 37% |  |
| 62 | 커뮤니티 메인 |  |  | 95% → 98% |  |
| 65 | 임직원조회 | 2015-08-04 A | 2015-08-07 A | 0% → 100% |  |

## Version 3 (saved 2015-08-27, file 프로젝트 일정 관리 20150827.mpp)

Note of the change: 프로젝트 일정 관리

Last finish stays 2016-01-29. Complete tasks 22 → 25.

Removed: 25 개발 구현

Changed:

| ID | Task | Start | Finish | Complete |
| --- | --- | --- | --- | --- |
| 1 | **임대형 그룹웨어 구축 프로젝트** |  |  | 41% → 49% |
| 24 | **구현** |  |  | 25% → 32% |
| 26 | **단위 업무 구현** |  |  | 25% → 28% |
| 27 | **일정관리** |  |  | 89% → 99% |
| 28 | 일정관리 기본 레이아웃 |  | 2015-08-05 A | 96% → 100% |
| 30 | 공유캘린더 |  | 2015-08-05 A | 0% → 100% |
| 31 | 반복일정 |  |  | 80% → 95% |
| 32 | 할일 | 2015-08-04 A | 2015-08-05 A | 0% → 100% |
| 33 | **관리자** |  |  | 32% → 36% |
| 34 | **환경설정** |  |  | 66% → 70% |
| 36 | 조직 관리 |  |  | 85% → 95% |
| 42 | **일정관리** |  |  | 0% → 48% |
| 44 | 공휴일 관리 | 2015-08-10 A |  | 0% → 80% |
| 45 | **전자결재** |  |  | 1% → 3% |
| 46 | 기본 설정 |  |  | 5% → 10% |
| 47 | 결재 양식 관리 | 2015-08-17 A |  | 0% → 5% |
